# Task A - 10

Schedule from MS Project, 2019-08-15 to 2020-08-04.

## Calendars

- Standard: Mon-Fri 08:00-12:00, 13:00-17:00; Sat-Sun off. Exceptions (off unless hours are given): 2019-01-01 to 2020-01-01 (New Year, recurring), 2019-01-20 to 2020-01-20 (Martin Luther King Day, recurring), 2019-05-25 to 2020-05-25 (Memorial Day, recurring), 2019-07-03 to 2020-09-07 (Independence Day, recurring), 2019-09-02 to 2019-09-03 (Labor Day), 2019-11-28 to 2020-11-26 (Thanksgiving Day, recurring), 2019-11-29 to 2019-11-30 (Thanksgiving Day2), 2019-12-24 (Christmas Eve), 2019-12-25 (Christmas Day).

## Resources

| Resource | Unit |
| --- | --- |
| Mock circuit Board | 3 |

## Schedule

| ID | Task | Type | Duration | Start | Finish | Predecessors | Total slack | Free slack | Resources |
| --- | --- | --- | --- | --- | --- | --- | --- | --- | --- |
| 1 | Obtain Tech/Functional Requirements |  | 5d | 2019-08-15 | 2019-08-21 |  | 0d |  |  |
| 2 | Clarify implant interface specifications |  | 3d | 2019-08-22 | 2019-08-26 | 1 | 0d |  |  |
| 3 | Identify enhancement parameters |  | 3d | 2019-08-22 | 2019-08-26 | 1 | 0d |  |  |
| 4 | Create Mock use cases |  | 6d | 2019-08-27 | 2019-09-05 | 3, 2 | 0d |  |  |
| 5 | Initial Mock interface design specs |  | 4d | 2019-09-06 | 2019-09-11 | 4 | 0d |  |  |
| 6 | Create low-fidelity Mock prototype |  | 3d | 2019-09-12 | 2019-09-16 | 5 | 0d |  |  |
| 7 | Low-fidelity Mock software interface testing |  | 10d | 2019-09-17 | 2019-09-30 | 6 | 0d |  |  |
| 8 | Create high-fidelity Mock interface prototype |  | 10d | 2019-10-01 | 2019-10-14 | 7 | 0d |  |  |
| 9 | High-fidelity Mock software interface testing |  | 4d | 2019-10-15 | 2019-10-18 | 8 | 0d |  |  |
| 10 | Mock system analysis |  | 14d | 2019-08-27 | 2019-09-17 | 3 | 23d |  |  |
| 11 | Mock enhancement functional design |  | 10d | 2019-10-21 | 2019-11-01 | 9, 10 | 0d |  |  |
| 12 | Mock add-on module functional design |  | 10d | 2019-10-21 | 2019-11-01 | 9, 10 | 8d | 0d |  |
| 13 | Mock enhancement development |  | 30d | 2019-11-04 | 2019-12-17 | 11 | 0d |  |  |
| 14 | Mock enhancement unit testing |  | 3d | 2019-12-18 | 2019-12-20 | 13 | 44d | 42d |  |
| 15 | Mock add-on module development |  | 20d | 2019-11-04 | 2019-12-03 | 12 | 8d | 0d |  |
| 16 | Mock add-on unit testing |  | 2d | 2019-12-04 | 2019-12-05 | 15 | 8d |  |  |
| 17 | Create Mock-Up use cases |  | 3d | 2019-08-27 | 2019-08-29 | 2, 3 | 116d | 0d |  |
| 18 | Create low-fidelity Mock-Up prototype |  | 5d | 2019-08-30 | 2019-09-09 | 17 | 116d | 0d |  |
| 19 | Low-fidelity Mock-up software interface testing |  | 9d | 2019-09-10 | 2019-09-20 | 18 | 116d | 0d |  |
| 20 | Create high-fidelity Mock-Up interface prototype |  | 10d | 2019-09-23 | 2019-10-04 | 19 | 116d | 0d |  |
| 21 | High-fidelity Mock-up software interface testing |  | 6d | 2019-10-07 | 2019-10-14 | 20 | 116d | 0d |  |
| 22 | Mock-Up software design |  | 10d | 2019-09-23 | 2019-10-04 | 19 | 122d | 6d |  |
| 23 | Mock-Up software devlopment |  | 20d | 2019-10-15 | 2019-11-11 | 22, 21 | 116d | 0d |  |
| 24 | Mock-Up unit testing |  | 4d | 2019-11-12 | 2019-11-15 | 23 | 116d |  |  |
| 25 | Create circuit board requirements |  | 19d | 2019-08-27 | 2019-09-24 | 2, 3 | 58d | 0d |  |
| 26 | Identify base OS |  | 10d | 2019-09-25 | 2019-10-08 | 25 | 76d | 0d |  |
| 27 | Configure OS constraints |  | 15d | 2019-10-09 | 2019-10-29 | 26 | 76d | 74d |  |
| 28 | Finalize initial board specifications |  | 20d | 2019-12-18 | 2020-01-17 | 25, 16, 13 | 0d |  |  |
| 29 | Order initial boards (lag) |  | 1d | 2020-02-18 | 2020-02-18 | 28FS+20d | 0d |  | Mock circuit Board [3 3] |
| 30 | Stand-alone initial board circuitry testing |  | 4d | 2020-02-19 | 2020-02-24 | 29 | 0d |  |  |
| 31 | Stand-alone initial board OS testing |  | 4d | 2020-02-19 | 2020-02-24 | 29, 27 | 2d | 0d |  |
| 32 | Stand-alone initial board app testing |  | 5d | 2020-02-25 | 2020-03-02 | 31, 14, 16 | 2d |  |  |
| 33 | Initial board / implant communication testing |  | 3d | 2020-02-25 | 2020-02-27 | 30 | 0d |  |  |
| 34 | Initial board / implant security testing |  | 4d | 2020-02-28 | 2020-03-04 | 33 | 0d |  |  |
| 35 | Initial board / implant integration testing |  | 10d | 2020-03-05 | 2020-03-18 | 32, 34 | 0d |  |  |
| 36 | Initial board / Mock-Up communication testing |  | 5d | 2020-02-25 | 2020-03-02 | 30 | 2d | 0d |  |
| 37 | Initial board / Mock-Up security testing |  | 4d | 2020-03-03 | 2020-03-06 | 36 | 2d | 0d |  |
| 38 | Initial board / Mock-Up integration testing |  | 6d | 2020-03-09 | 2020-03-16 | 32, 37 | 2d |  |  |
| 39 | Finalize revision board specifications |  | 5d | 2020-03-19 | 2020-03-25 | 35, 38 | 0d |  |  |
| 40 | Order revision boards (lag) |  | 1d | 2020-04-16 | 2020-04-16 | 39FS+15d | 0d |  | Mock circuit Board [1 3] |
| 41 | Stand-alone revision board circuitry testing |  | 4d | 2020-04-17 | 2020-04-22 | 40 | 0d |  |  |
| 42 | Stand-alone revision board OS testing |  | 4d | 2020-04-17 | 2020-04-22 | 40 | 13d | 0d |  |
| 43 | Stand-alone revision board app testing |  | 5d | 2020-04-23 | 2020-04-29 | 42 | 13d | 2d |  |
| 44 | Revision board / implant communication testing |  | 3d | 2020-04-23 | 2020-04-27 | 41 | 11d | 0d |  |
| 45 | Revision board / implant security testing |  | 4d | 2020-04-28 | 2020-05-01 | 44 | 11d | 0d |  |
| 46 | Revision board / implant integration testing |  | 10d | 2020-05-04 | 2020-05-15 | 45, 43 | 11d | 0d |  |
| 47 | Revision board / Mock-Up communication testing |  | 5d | 2020-04-23 | 2020-04-29 | 41 | 0d |  |  |
| 48 | Revision board / Mock-Up security testing |  | 4d | 2020-04-30 | 2020-05-05 | 47 | 0d |  |  |
| 49 | Revision board / Mock-Up integration testing |  | 6d | 2020-05-06 | 2020-05-13 | 24, 48 | 0d |  |  |
| 50 | Identify case environmental requirements |  | 4d | 2019-08-27 | 2019-08-30 | 3 | 146d | 0d |  |
| 51 | Design physical device specifications |  | 12d | 2019-09-04 | 2019-09-19 | 50 | 146d | 0d |  |
| 52 | Create RFP for case |  | 2d | 2019-09-20 | 2019-09-23 | 51 | 146d | 0d |  |
| 53 | Review case proposals |  | 1d | 2019-09-24 | 2019-09-24 | 52 | 146d | 0d |  |
| 54 | Purchase cases (lag) |  | 1d | 2019-10-09 | 2019-10-09 | 53FS+10d | 146d | 0d |  |
| 55 | Test case physical specifications |  | 5d | 2019-10-10 | 2019-10-16 | 54 | 146d | 0d |  |
| 56 | Test board-case compatibility |  | 2d | 2019-10-10 | 2019-10-11 | 54 | 159d | 0d |  |
| 57 | Packaging design |  | 10d | 2019-09-20 | 2019-10-03 | 51 | 162d | 0d |  |
| 58 | Packaging production |  | 14d | 2019-10-04 | 2019-10-23 | 57 | 162d |  |  |
| 59 | Write installation instructions |  | 23d | 2020-05-14 | 2020-06-16 | 38, 49 | 0d |  |  |
| 60 | Order final circuit boards |  | 1d | 2019-10-14 | 2019-10-14 | 56 | 159d | 148d |  |
| 61 | Order cases |  | 1d | 2019-10-31 | 2019-10-31 | 56, 55FS+10d | 146d | 135d |  |
| 62 | Assemble first production unit |  | 2d | 2020-05-18 | 2020-05-19 | 60, 61, 46, 49 | 11d | 0d |  |
| 63 | Create RFP for testing group |  | 8d | 2019-09-06 | 2019-09-17 | 4, 17 | 157d | 0d |  |
| 64 | Submit RFP for testing |  | 3d | 2019-10-02 | 2019-10-04 | 63FS+10d | 157d | 0d |  |
| 65 | Contract external testing group |  | 10d | 2019-10-07 | 2019-10-18 | 64 | 157d | 146d |  |
| 66 | Comprehensive product test |  | 8d | 2020-05-20 | 2020-06-01 | 62, 65, 24 | 11d | 0d |  |
| 67 | Assemble 25 units for delivery |  | 35d | 2020-06-17 | 2020-08-04 | 60, 61, 66, 58, 59 | 0d |  |  |
| 68 | Train sales staff |  | 5d | 2019-10-04 | 2019-10-10 | 57 | 206d |  |  |
| 69 | Train support staff |  | 8d | 2020-06-02 | 2020-06-11 | 66 | 38d |  |  |
| 70 | Final Delivery | milestone | 0d | 2020-08-04 | 2020-08-04 | 68, 69, 67 | 0d |  |  |
