# Task A - 6

Schedule from MS Project, 2019-08-15 to 2020-07-10, costs in $.

## Calendars

- Standard: Mon-Fri 08:00-12:00, 13:00-17:00; Sat-Sun off. Exceptions (off unless hours are given): 2019-09-02 (Labor Day, recurring), 2019-11-28 to 2019-11-29 (Thanksgiving Day, recurring), 2019-12-24 to 2020-12-24 (Christmas Eve , recurring), 2019-12-25 (Christmas Day, recurring), 2020-01-01 (New Years, recurring), 2020-01-20 (Martin Luther King Day, recurring), 2020-05-31 (Memorial Day, recurring), 2020-06-01 (Monday following Memorial day), 2020-07-03 (Friday before independence day), 2020-07-04 (Independence Day , recurring).

## Schedule

| ID | Task | Type | Duration | Start | Finish | Predecessors | Total slack | Free slack | Constraint | Cost |
| --- | --- | --- | --- | --- | --- | --- | --- | --- | --- | --- |
| 1 | Obtain Tech/Functional Requirements |  | 5d | 2019-08-15 | 2019-08-21 |  | 0d |  | start no earlier than 2019-08-15 |  |
| 2 | Clarify implant interface specifications |  | 3d | 2019-08-22 | 2019-08-26 | 1 | 0d |  |  |  |
| 3 | Identify enhancement parameters |  | 3d | 2019-08-22 | 2019-08-26 | 1 | 0d |  |  |  |
| 4 | Create Mock use cases |  | 6d | 2019-08-27 | 2019-09-04 | 3, 2 | 0d |  |  |  |
| 5 | Initial Mock interface design specs |  | 4d | 2019-09-05 | 2019-09-10 | 4 | 0d |  |  |  |
| 6 | Create low-fidelity Mock prototype |  | 3d | 2019-09-11 | 2019-09-13 | 5 | 0d |  |  |  |
| 7 | Low-fidelity Mock software interface testing |  | 7d | 2019-09-16 | 2019-09-24 | 6 | 0d |  |  | 20,000 |
| 8 | Create high-fidelity Mock interface prototype |  | 5d | 2019-09-25 | 2019-10-01 | 7 | 0d |  |  | 80,000 |
| 9 | High-fidelity Mock software interface testing |  | 4d | 2019-10-02 | 2019-10-07 | 8 | 0d |  |  |  |
| 10 | Mock system analysis |  | 14d | 2019-08-27 | 2019-09-16 | 3 | 15d | 14d |  |  |
| 11 | Mock enhancement functional design |  | 10d | 2019-09-24 | 2019-10-07 | 9FF, 10SS+5d | 2d | 0d |  |  |
| 12 | Mock add-on module functional design |  | 10d | 2019-10-08 | 2019-10-21 | 9, 10 | 0d |  |  |  |
| 13 | Mock enhancement development |  | 30d | 2019-10-08 | 2019-11-18 | 11 | 2d | 0d |  | 120,000 |
| 14 | Mock enhancement unit testing |  | 3d | 2019-11-19 | 2019-11-21 | 13 | 46d | 44d |  |  |
| 15 | Mock add-on module development |  | 20d | 2019-10-22 | 2019-11-18 | 12 | 0d |  |  |  |
| 16 | Mock add-on unit testing |  | 2d | 2019-11-19 | 2019-11-20 | 15 | 0d |  |  |  |
| 17 | Create Mock-Up use cases |  | 3d | 2019-08-27 | 2019-08-29 | 2, 3 | 96d | 0d |  |  |
| 18 | Create low-fidelity Mock-Up prototype |  | 5d | 2019-08-30 | 2019-09-06 | 17 | 96d | 0d |  |  |
| 19 | Low-fidelity Mock-up software interface testing |  | 9d | 2019-09-09 | 2019-09-19 | 18 | 96d | 0d |  | 15,000 |
| 20 | Create high-fidelity Mock-Up interface prototype |  | 10d | 2019-09-20 | 2019-10-03 | 19 | 96d | 0d |  | 80,000 |
| 21 | High-fidelity Mock-up software interface testing |  | 6d | 2019-10-04 | 2019-10-11 | 20 | 96d | 0d |  |  |
| 22 | Mock-Up software design |  | 10d | 2019-09-20 | 2019-10-03 | 19 | 102d | 6d |  |  |
| 23 | Mock-Up software devlopment |  | 20d | 2019-10-14 | 2019-11-08 | 22, 21 | 96d | 0d |  | 15,000 |
| 24 | Mock-Up unit testing |  | 4d | 2019-11-11 | 2019-11-14 | 23 | 96d |  |  |  |
| 25 | Create circuit board requirements |  | 19d | 2019-08-27 | 2019-09-23 | 2, 3 | 42d | 0d |  |  |
| 26 | Identify base OS |  | 10d | 2019-09-24 | 2019-10-07 | 25 | 60d | 0d |  |  |
| 27 | Configure OS constraints |  | 15d | 2019-10-08 | 2019-10-28 | 26 | 60d | 58d |  |  |
| 28 | Finalize initial board specifications |  | 20d | 2019-11-21 | 2019-12-20 | 25, 16, 13 | 0d |  |  | 60,000 |
| 29 | Order initial boards (lag) |  | 1d | 2020-01-24 | 2020-01-24 | 28FS+20d | 0d |  |  |  |
| 30 | Stand-alone initial board circuitry testing |  | 4d | 2020-01-27 | 2020-01-30 | 29 | 0d |  |  |  |
| 31 | Stand-alone initial board OS testing |  | 4d | 2020-01-27 | 2020-01-30 | 29, 27 | 2d | 0d |  |  |
| 32 | Stand-alone initial board app testing |  | 5d | 2020-01-31 | 2020-02-06 | 31, 14, 16 | 2d | 0d |  |  |
| 33 | Initial board / implant communication testing |  | 3d | 2020-01-31 | 2020-02-04 | 30 | 0d |  |  |  |
| 34 | Initial board / implant security testing |  | 4d | 2020-02-05 | 2020-02-10 | 33 | 0d |  |  |  |
| 35 | Initial board / implant integration testing |  | 10d | 2020-02-11 | 2020-02-24 | 32, 34 | 0d |  |  |  |
| 36 | Initial board / Mock-Up communication testing |  | 5d | 2020-01-31 | 2020-02-06 | 30 | 6d | 0d |  |  |
| 37 | Initial board / Mock-Up security testing |  | 4d | 2020-02-05 | 2020-02-10 | 36SS+3d | 6d | 0d |  |  |
| 38 | Initial board / Mock-Up integration testing |  | 6d | 2020-02-07 | 2020-02-14 | 32, 37SS+2d | 6d |  |  |  |
| 39 | Finalize revision board specifications |  | 5d | 2020-02-25 | 2020-03-02 | 35, 38 | 0d |  |  |  |
| 40 | Order revision boards (lag) |  | 1d | 2020-03-24 | 2020-03-24 | 39FS+15d | 0d |  |  |  |
| 41 | Stand-alone revision board circuitry testing |  | 4d | 2020-03-25 | 2020-03-30 | 40 | 0d |  |  |  |
| 42 | Stand-alone revision board OS testing |  | 4d | 2020-03-25 | 2020-03-30 | 40 | 6d | 0d |  |  |
| 43 | Stand-alone revision board app testing |  | 5d | 2020-03-31 | 2020-04-06 | 42 | 6d | 2d |  |  |
| 44 | Revision board / implant communication testing |  | 3d | 2020-03-31 | 2020-04-02 | 41 | 4d | 0d |  |  |
| 45 | Revision board / implant security testing |  | 4d | 2020-04-03 | 2020-04-08 | 44 | 4d | 0d |  |  |
| 46 | Revision board / implant integration testing |  | 10d | 2020-04-09 | 2020-04-22 | 45, 43 | 4d | 0d |  |  |
| 47 | Revision board / Mock-Up communication testing |  | 5d | 2020-03-31 | 2020-04-06 | 41 | 0d |  |  |  |
| 48 | Revision board / Mock-Up security testing |  | 4d | 2020-04-03 | 2020-04-08 | 47SS+3d | 0d |  |  |  |
| 49 | Revision board / Mock-Up integration testing |  | 6d | 2020-04-07 | 2020-04-14 | 24, 48SS+2d | 0d |  |  |  |
| 50 | Identify case environmental requirements |  | 4d | 2019-08-27 | 2019-08-30 | 3 | 123d | 0d |  |  |
| 51 | Design physical device specifications |  | 12d | 2019-09-03 | 2019-09-18 | 50 | 123d | 0d |  |  |
| 52 | Create RFP for case |  | 2d | 2019-09-19 | 2019-09-20 | 51 | 123d | 0d |  |  |
| 53 | Review case proposals |  | 1d | 2019-09-23 | 2019-09-23 | 52 | 123d | 0d |  |  |
| 54 | Purchase cases (lag) |  | 1d | 2019-10-08 | 2019-10-08 | 53FS+10d | 123d | 0d |  |  |
| 55 | Test case physical specifications |  | 5d | 2019-10-09 | 2019-10-15 | 54 | 123d | 0d |  |  |
| 56 | Test board-case compatibility |  | 2d | 2019-10-09 | 2019-10-10 | 54 | 136d | 0d |  |  |
| 57 | Packaging design |  | 10d | 2019-09-19 | 2019-10-02 | 51 | 139d | 0d |  |  |
| 58 | Packaging production |  | 14d | 2019-10-03 | 2019-10-22 | 57 | 139d |  |  |  |
| 59 | Write installation instructions |  | 20d | 2020-04-15 | 2020-05-12 | 38, 49 | 0d |  |  | 60,000 |
| 60 | Order final circuit boards |  | 1d | 2019-10-11 | 2019-10-11 | 56 | 136d | 132d |  |  |
| 61 | Order cases |  | 1d | 2019-10-30 | 2019-10-30 | 56, 55FS+10d | 123d | 119d |  |  |
| 62 | Assemble first production unit |  | 2d | 2020-04-23 | 2020-04-24 | 60, 61, 46, 49 | 4d | 0d |  |  |
| 63 | Create RFP for testing group |  | 8d | 2019-09-05 | 2019-09-16 | 4, 17 | 134d | 0d |  |  |
| 64 | Submit RFP for testing |  | 3d | 2019-10-01 | 2019-10-03 | 63FS+10d | 134d | 0d |  |  |
| 65 | Contract external testing group |  | 10d | 2019-10-04 | 2019-10-17 | 64 | 134d | 130d |  |  |
| 66 | Comprehensive product test |  | 8d | 2020-04-27 | 2020-05-06 | 62, 65, 24 | 4d | 0d |  |  |
| 67 | Assemble 25 units for delivery |  | 41d | 2020-05-13 | 2020-07-10 | 60, 61, 66, 58, 59 | 0d |  |  |  |
| 68 | Train sales staff |  | 5d | 2019-10-03 | 2019-10-09 | 57 | 189d |  |  |  |
| 69 | Train support staff |  | 8d | 2020-05-07 | 2020-05-18 | 66 | 37d |  |  |  |
| 70 | Final Delivery | milestone | 0d | 2020-07-10 | 2020-07-10 | 68, 69, 67 | 0d |  |  |  |
